Schedule from MS Project, 2022-04-25 to 2022-06-14, 20 hours a day, costs in р., A marks actual dates.
Microsoft

## Calendars

- 24 часа: Mon-Sun 00:00-24:00.

## Resources

| Resource | Rate |
| --- | --- |
| Маша | 2000 |
| Настя | 2000 |
| Надя | 2000 |
| Алина | 2000 |
| Аня | 2000 |
| Заказчик |  |
| 20 |  |

## Schedule

| ID | WBS | Task | Type | Duration | Start | Finish | Predecessors | Complete | Remaining | Total slack | Free slack | Constraint | Resources | Work | Actual work | Cost | Actual cost |
| --- | --- | --- | --- | --- | --- | --- | --- | --- | --- | --- | --- | --- | --- | --- | --- | --- | --- |
| 1 | 1 | **Проект "Автоматизация процесса ежемесячного планирования производства на основе плана продаж". Реализация решения** |  | 60.02d | 2022-04-25 09:00 A | 2022-06-14 09:18 |  | 41% | 35.56d | 0d |  |  |  | 108.9h | 42.7h | 176,800 | 70,800 |
| 2 | 1.1 | **Этап 1. Подготовка к реализации решения** |  | 12.05d | 2022-04-25 09:00 A | 2022-05-05 10:00 |  | 54% | 5.55d | 47.97d |  |  |  | 15.3h | 7.3h | 26,600 | 14,600 |
| 3 | 1.1.1 | Посещение вебинара Александра по работе в IBM PA |  | 2.72h | 2022-04-25 09:00 A | 2022-04-25 11:43 A |  | 100% |  |  |  | start no earlier than 2022-04-25 08:00 | Маша; Надя | 3h | 3h | 6,000 | 6,000 |
| 4 | 1.1.2 | **Подготовка плана проекта** |  | 3.65d | 2022-05-02 09:00 A | 2022-05-05 10:00 |  | 40% | 2.19d | 47.97d |  |  |  | 12h | 4h | 20,000 | 8,000 |
| 5 | 1.1.2.1 | Подготовка первого драфта плана проекта |  | 4h | 2022-05-02 09:00 A | 2022-05-02 13:00 A | 3 | 100% |  |  |  | start no earlier than 2022-05-02 08:00 | Маша | 4h | 4h | 8,000 | 8,000 |
| 6 | 1.1.2.2 | Первый драфт плана проекта передан на согласование | milestone | 0h | 2022-05-02 13:00 | 2022-05-02 13:00 | 5 |  |  | 5.55d | 0.2d | start no earlier than 2022-02-09 09:00 |  |  |  |  |  |
| 7 | 1.1.2.3 | Согласование первого драфта плана проекта |  | 1h | 2022-05-03 09:00 | 2022-05-03 10:00 | 6 |  |  | 49.31d | 1.15d | start no earlier than 2022-05-03 08:00 | Заказчик; Маша | 2h |  | 2,000 |  |
| 8 | 1.1.2.4 | Исправление замечаний. Подготовка финальной версии документа |  | 4h | 2022-05-04 09:00 | 2022-05-04 13:00 | 7 |  |  | 48.16d | 0d | start no earlier than 2022-05-04 08:00 | Маша | 4h |  | 8,000 |  |
| 9 | 1.1.2.5 | Окончательная версия передана на согласование | milestone | 0h | 2022-05-04 13:00 | 2022-05-04 13:00 | 8 |  |  | 4.97d | 0.2d |  |  |  |  |  |  |
| 10 | 1.1.2.6 | Согласование окончательной версии плана проекта |  | 1h | 2022-05-05 09:00 | 2022-05-05 10:00 | 9 |  |  | 47.22d | 0d | start no earlier than 2022-05-05 08:00 | Заказчик; Маша | 2h |  | 2,000 |  |
| 11 | 1.1.2.7 | План проекта согласован | milestone | 0h | 2022-05-05 10:00 | 2022-05-05 10:00 | 10 |  |  | 4.75d |  | start no earlier than 2022-02-11 09:00 |  |  |  |  |  |
| 12 | 1.1.3 | Согласование даты встречи с Заказчиком |  | 0.3h | 2022-05-05 08:00 A | 2022-05-05 09:18 A | 11 | 100% |  |  |  | start no earlier than 2022-05-19 08:00 | Маша; Заказчик | 0.3h | 0.3h | 600 | 600 |
| 13 | 1.1.4 | Дата встречи согласована | milestone | 0h | 2022-05-05 08:00 A | 2022-05-05 08:00 A | 12 | 100% |  |  |  |  |  |  |  |  |  |
| 14 | 1.2 | **Этап 2. Построение кубов** |  | 15.3d | 2022-05-11 17:00 A | 2022-05-24 11:00 |  | 78% | 3.33d | 25.11d |  |  |  | 32.6h | 26.4h | 53,400 | 42,200 |
| 15 | 1.2.1 | Проведение встречи с Заказчиком. Обсуждение архитектуры кубов "Прогноз продаж" и "Балансовое уравнение" |  | 1h | 2022-05-11 17:00 A | 2022-05-11 18:00 A | 13 | 100% |  |  |  | finish no earlier than 2022-05-11 20:00 | Заказчик; Маша; Надя | 3h | 3h | 4,000 | 4,000 |
| 16 | 1.2.2 | Согласование даты встречи с Заказчиком |  | 0.3h | 2022-05-11 17:00 A | 2022-05-12 09:18 | 15 |  | 0.3h | 34.88d |  |  | Маша; Заказчик | 0.6h |  | 600 |  |
| 17 | 1.2.3 | Дата втречи согласована | milestone | 0h | 2022-05-11 17:00 A | 2022-05-11 17:00 A | 16 | 100% |  |  |  |  |  |  |  |  |  |
| 18 | 1.2.4 | Написание отчета о статусе проекта |  | 0.5h | 2022-05-12 08:00 A | 2022-05-12 09:30 A | 17 | 100% |  |  |  |  | Маша | 0.5h | 0.5h | 1,000 | 1,000 |
| 19 | 1.2.5 | Отчет о статусе проекта сдан | milestone | 0h | 2022-05-12 08:00 A | 2022-05-12 08:00 A | 18 | 100% |  |  |  |  |  |  |  |  |  |
| 20 | 1.2.6 | Дополнение рамок, допущений и ограничений проекта |  | 4h | 2022-05-13 09:00 | 2022-05-13 13:00 | 19 |  |  | 37.47d |  | start no earlier than 2022-05-13 08:00 | Маша | 4h |  | 8,000 |  |
| 21 | 1.2.7 | Построение модели трех кубов и их взаимодействия в Excel |  | 2h | 2022-05-16 08:00 A | 2022-05-17 11:00 A | 20 | 100% |  |  |  | finish no earlier than 2022-05-16 20:00 | Маша | 2h | 2h | 4,000 | 4,000 |
| 22 | 1.2.8 | **Создание куба "Прогноз продаж" и его измерений. Наполнение куба данными** |  | 0.1d | 2022-05-17 08:00 A | 2022-05-17 10:00 A |  | 100% |  |  |  |  |  | 2.8h | 2.8h | 5,600 | 5,600 |
| 23 | 1.2.8.1 | Создание измерения "SKU" |  | 0.5h | 2022-05-17 08:00 A | 2022-05-17 09:30 A | 21 | 100% |  |  |  | start no earlier than 2022-05-19 08:00 | Надя | 0.5h | 0.5h | 1,000 | 1,000 |
| 24 | 1.2.8.2 | Создание измерения "Период" |  | 0.5h | 2022-05-17 08:00 A | 2022-05-17 09:30 A | 23 | 100% |  |  |  |  | Надя | 0.5h | 0.5h | 1,000 | 1,000 |
| 25 | 1.2.8.3 | Создание измерения "Показатели прогноза продаж" |  | 0.3h | 2022-05-17 08:00 A | 2022-05-17 09:18 A | 24 | 100% |  |  |  |  | Надя | 0.3h | 0.3h | 600 | 600 |
| 26 | 1.2.8.4 | Создание куба "Прогноз продаж" |  | 0.5h | 2022-05-17 08:00 A | 2022-05-17 09:30 A | 25 | 100% |  |  |  |  | Надя | 0.5h | 0.5h | 1,000 | 1,000 |
| 27 | 1.2.8.5 | Наполнение куба "Прогноз продаж" данными |  | 1h | 2022-05-17 08:00 A | 2022-05-17 10:00 A | 26 | 100% |  |  |  |  | Надя | 1h | 1h | 2,000 | 2,000 |
| 28 | 1.2.9 | Проведение встречи с заказчиком. Более подробное обсуждение архитектуры куба "Балансовое уравнение" . Обсуждение архитектуры куба "Запасы" |  | 2h | 2022-05-18 08:00 A | 2022-05-18 11:00 A | 21 | 100% |  |  |  |  | Заказчик; Маша | 4h | 4h | 4,000 | 4,000 |
| 29 | 1.2.10 | Согласование даты встречи с Заказчиком |  | 0.3h | 2022-05-18 08:00 A | 2022-05-18 09:18 A | 28 | 100% |  |  |  |  | Заказчик; Маша | 0.6h | 0.6h | 600 | 600 |
| 30 | 1.2.11 | Дата втречи согласована | milestone | 0h | 2022-05-18 08:00 A | 2022-05-18 08:00 A | 29 | 100% |  |  |  |  |  |  |  |  |  |

| ID | WBS | Task | Type | Duration | Start | Finish | Predecessors | Complete | Remaining | Total slack | Free slack | Constraint | Resources | Work | Actual work | Cost | Actual cost |
| --- | --- | --- | --- | --- | --- | --- | --- | --- | --- | --- | --- | --- | --- | --- | --- | --- | --- |
| 31 | 1.2.12 | **Создание куба "Балансовое уравнение" и его измерений. Наполнение куба данными** |  | 1.8d | 2022-05-18 08:00 A | 2022-05-19 20:00 |  | 88% | 0.21d | 30.66d |  |  |  | 8.5h | 7.5h | 17,000 | 15,000 |
| 32 | 1.2.12.1 | Создание измерения "Показатели балансового уравнения" |  | 0.5h | 2022-05-18 08:00 A | 2022-05-18 09:30 A | 24, 28 | 100% |  |  |  |  | Маша | 0.5h | 0.5h | 1,000 | 1,000 |
| 33 | 1.2.12.2 | Создание куба "Балансовое уравнение" |  | 0.5h | 2022-05-18 08:00 A | 2022-05-18 09:30 A | 32 | 100% |  |  |  |  | Маша | 0.5h | 0.5h | 1,000 | 1,000 |
| 34 | 1.2.12.3 | Наполнение куба "Балансовое уравнение" данными |  | 0.5h | 2022-05-18 08:00 A | 2022-05-18 09:30 A | 33 | 100% |  |  |  |  | Маша | 0.5h | 0.5h | 1,000 | 1,000 |
| 35 | 1.2.12.4 | Написание бизнес-правил для куба "Балансовое уравнение" |  | 6h | 2022-05-19 08:00 A | 2022-05-19 16:00 A | 34 | 100% |  |  |  |  | Маша | 6h | 6h | 12,000 | 12,000 |
| 36 | 1.2.12.5 | Написание фидоров для куба "Балансовое уравнение" |  | 1h | 2022-05-19 17:00 | 2022-05-19 20:00 | 35 |  |  | 30.02d |  | finish no earlier than 2022-05-19 20:00 | Маша | 1h |  | 2,000 |  |
| 37 | 1.2.13 | Написание отчета о статусе проекта |  | 0.5h | 2022-05-19 08:00 A | 2022-05-19 10:30 A | 36 | 100% |  |  |  |  | Маша | 0.5h | 0.5h | 1,000 | 1,000 |
| 38 | 1.2.14 | Отчет о статусе проекта сдан | milestone | 0h | 2022-05-19 08:00 A | 2022-05-19 08:00 A | 37 | 100% |  |  |  |  |  |  |  |  |  |
| 39 | 1.2.15 | **Создание куба "Запасы" и его измерений. Наполнение куба данными** |  | 0.07d | 2022-05-23 08:00 A | 2022-05-23 09:30 A |  | 100% |  |  |  |  |  | 1.5h | 1.5h | 3,000 | 3,000 |
| 40 | 1.2.15.1 | Создание измерения "Показатели запасов" |  | 0.5h | 2022-05-23 08:00 A | 2022-05-23 09:30 A | 38 | 100% |  |  |  |  | Маша | 0.5h | 0.5h | 1,000 | 1,000 |
| 41 | 1.2.15.2 | Создание куба "Запасы" |  | 0.5h | 2022-05-23 08:00 A | 2022-05-23 09:30 A | 40 | 100% |  |  |  |  | Маша | 0.5h | 0.5h | 1,000 | 1,000 |
| 42 | 1.2.15.3 | Наполнение куба "Запасы" данными |  | 0.5h | 2022-05-23 08:00 A | 2022-05-23 09:30 A | 41 | 100% |  |  |  |  | Маша | 0.5h | 0.5h | 1,000 | 1,000 |
| 43 | 1.2.16 | Согласование построенных кубов с Заказчиком |  | 2h | 2022-05-24 08:00 A | 2022-05-24 11:00 A | 42 | 100% |  |  |  |  | Заказчик; Маша | 4h | 4h | 4,000 | 4,000 |
| 44 | 1.2.17 | Построенные кубы согласованы | milestone | 0h | 2022-05-24 08:00 A | 2022-05-24 08:00 A | 43 | 100% |  |  |  |  |  |  |  |  |  |
| 45 | 1.2.18 | Согласование даты встречи с Заказчиком |  | 0.3h | 2022-05-24 08:00 A | 2022-05-24 09:18 | 44 |  | 0.3h | 25.2d |  |  | Маша; Заказчик | 0.6h |  | 600 |  |
| 46 | 1.2.19 | Дата встречи согласована | milestone | 0h | 2022-05-24 08:00 A | 2022-05-24 08:00 A | 45 | 100% |  |  |  |  |  |  |  |  |  |
| 47 | 1.3 | **Этап 3. Построение дашбордов** |  | 7.42d | 2022-06-01 08:00 A | 2022-06-07 12:18 |  | 19% | 6.02d | 8.25d |  |  |  | 19.2h | 8h | 29,200 | 12,000 |
| 48 | 1.3.1 | Проведение встречи с Заказчиком. Обсуждение архитектуры дашбордов |  | 2h | 2022-06-01 08:00 A | 2022-06-01 11:00 A | 46 | 100% |  |  |  |  | Заказчик; Маша; Надя; Настя | 8h | 8h | 12,000 | 12,000 |
| 49 | 1.3.2 | Согласование даты встречи с Заказчиком |  | 0.3h | 2022-06-01 11:00 | 2022-06-01 11:18 | 48 |  |  | 8.64d | 0d |  | Заказчик; Маша | 0.6h |  | 600 |  |
| 50 | 1.3.3 | Дата встречи согласована | milestone | 0h | 2022-06-01 11:18 | 2022-06-01 11:18 | 49 |  |  | 1.49d | 1.08d |  |  |  |  |  |  |
| 51 | 1.3.4 | Создание дашборда "Загрузка плана продаж" (Demand) |  | 2h | 2022-06-02 09:00 | 2022-06-02 11:00 | 50 |  |  | 7.56d | 1.1d | start no earlier than 2022-06-02 08:00 | Настя | 2h |  | 4,000 |  |
| 52 | 1.3.5 | Создание дашборда "Планирование производства" |  | 2h | 2022-06-03 09:00 | 2022-06-03 11:00 | 51 |  |  | 7.21d | 3.5d | start no earlier than 2022-06-03 08:00 | Настя | 2h |  | 4,000 |  |
| 53 | 1.3.6 | Создание дашборда "Отчет" |  | 2h | 2022-06-06 09:00 | 2022-06-06 11:00 | 52 |  |  | 3.71d | 1.1d | start no earlier than 2022-06-06 08:00 | Настя | 2h |  | 4,000 |  |
| 54 | 1.3.7 | Согласование построенных дашбордов с Заказчиком |  | 2h | 2022-06-07 09:00 | 2022-06-07 12:00 | 53 |  |  | 0.36d | 0d | start no earlier than 2022-06-07 08:00 | Заказчик; Настя | 4h |  | 4,000 |  |
| 55 | 1.3.8 | Построенные дашборды согласованы | milestone | 0h | 2022-06-07 12:00 | 2022-06-07 12:00 | 54 |  |  | 1.11d | 0d |  |  |  |  |  |  |
| 56 | 1.3.9 | Согласование даты встречи с Заказчиком |  | 0.3h | 2022-06-07 12:00 | 2022-06-07 12:18 | 55 |  |  | 8.25d | 0d |  | Маша; Заказчик | 0.6h |  | 600 |  |
| 57 | 1.3.10 | Дата встречи согласована | milestone | 0h | 2022-06-07 12:18 | 2022-06-07 12:18 | 56 |  |  | 1.08d |  |  |  |  |  |  |  |

| ID | WBS | Task | Type | Duration | Start | Finish | Predecessors | Complete | Remaining | Total slack | Free slack | Constraint | Resources | Work | Actual work | Cost | Actual cost |
| --- | --- | --- | --- | --- | --- | --- | --- | --- | --- | --- | --- | --- | --- | --- | --- | --- | --- |
| 58 | 1.4 | **Этап 4. Написание отчета. Создание презентации и съемка демо видео. Выполнение дополнительных задач** |  | 9.7d | 2022-06-02 09:00 A | 2022-06-10 11:00 |  | 4% | 9.3d | 4.7d |  |  |  | 40.3h | 1h | 64,600 | 2,000 |
| 59 | 1.4.1 | **Написание отчета** |  | 6.3d | 2022-06-02 09:00 A | 2022-06-07 15:00 |  | 20% | 5.04d | 3.56d |  |  |  | 5h | 1h | 10,000 | 2,000 |
| 60 | 1.4.1.1 | Оформление первых разделов отчета (с 3 модуля) согласно указаниям в методичке |  | 1h | 2022-06-02 09:00 A | 2022-06-02 10:00 A | 44 | 100% |  |  |  | start no earlier than 2022-06-02 08:00 | Надя | 1h | 1h | 2,000 | 2,000 |
| 61 | 1.4.1.2 | **Написание в отчете раздела «Практическая реализация»** |  | 5.1d | 2022-06-03 09:00 | 2022-06-07 15:00 |  |  |  | 3.56d |  |  |  | 4h |  | 8,000 |  |
| 62 | 1.4.1.2.1 | Описание построенных кубов |  | 2h | 2022-06-03 09:00 | 2022-06-03 11:00 | 60 |  |  | 8.51d | 5.15d | start no earlier than 2022-06-03 08:00 | Надя | 2h |  | 4,000 |  |
| 63 | 1.4.1.2.2 | Описание построенных дашбордов |  | 2h | 2022-06-07 12:00 | 2022-06-07 15:00 | 55 |  |  | 3.56d | 0.15d | start no earlier than 2022-06-07 08:00 | Настя | 2h |  | 4,000 |  |
| 64 | 1.4.2 | **Выполнение дополнительного исследования** |  | 0.3d | 2022-06-07 12:00 | 2022-06-07 18:00 |  |  |  | 2.66d |  |  |  | 5h |  | 10,000 |  |
| 65 | 1.4.2.1 | Поиск российских аналогов по СРМ и написание на них кратких обзоров |  | 5h | 2022-06-07 12:00 | 2022-06-07 18:00 | 55 |  |  | 2.66d | 0d | start no earlier than 2022-06-06 08:00 | Алина | 5h |  | 10,000 |  |
| 66 | 1.4.3 | Первый драфт отчета (включая дополнительное исследование) передан на согласование | milestone | 0h | 2022-06-07 18:00 | 2022-06-07 18:00 | 62, 63, 65 |  |  | 3.41d | 0.75d |  |  |  |  |  |  |
| 67 | 1.4.4 | **Составление презентации** |  | 0.19d | 2022-06-08 09:00 | 2022-06-08 12:48 |  |  |  | 2.66d |  |  |  | 3.8h |  | 7,600 |  |
| 68 | 1.4.4.1 | Напоминание постановки задачи (из презентации с 3 модуля) |  | 0.1h | 2022-06-08 09:00 | 2022-06-08 09:06 | 66 |  |  | 2.66d | 0d |  | Аня | 0.1h |  | 200 |  |
| 69 | 1.4.4.2 | Написание прикладной части (про реализованное решение) |  | 1h | 2022-06-08 09:06 | 2022-06-08 10:06 | 68 |  |  | 2.66d | 0d |  | Аня | 1h |  | 2,000 |  |
| 70 | 1.4.4.3 | Вставка обновленного плана проекта (на 4 модуль) |  | 0.1h | 2022-06-08 10:06 | 2022-06-08 10:12 | 69 |  |  | 2.66d | 0d |  | Аня | 0.1h |  | 200 |  |
| 71 | 1.4.4.4 | Вставка дополнительных рамок, ожиданий, ограничений проекта |  | 0.1h | 2022-06-08 10:12 | 2022-06-08 10:18 | 70 |  |  | 2.66d | 0d |  | Аня | 0.1h |  | 200 |  |
| 72 | 1.4.4.5 | Описание ожидаемых эффектов от внедрения решения |  | 0.5h | 2022-06-08 10:18 | 2022-06-08 10:48 | 71 |  |  | 2.66d | 0d |  | Аня | 0.5h |  | 1,000 |  |
| 73 | 1.4.4.6 | Описание перспектив развития использования решения |  | 2h | 2022-06-08 10:48 | 2022-06-08 12:48 | 72 |  |  | 2.66d | 0d |  | Аня | 2h |  | 4,000 |  |
| 74 | 1.4.5 | Первый вариант презентации передан на согласование | milestone | 0h | 2022-06-08 12:48 | 2022-06-08 12:48 | 73 |  |  | 1.11d | 1.01d |  |  |  |  |  |  |
| 75 | 1.4.6 | **Съемка и монтаж демо видео** |  | 0.07d | 2022-06-08 09:00 | 2022-06-08 10:30 |  |  |  | 2.77d |  |  |  | 2.5h |  | 5,000 |  |
| 76 | 1.4.6.1 | Съемка части видео про кубы |  | 1h | 2022-06-08 09:00 | 2022-06-08 10:00 | 44 |  |  | 2.77d | 0d | start no earlier than 2022-06-08 08:00 | Маша | 1h |  | 2,000 |  |
| 77 | 1.4.6.2 | Съемка части видео про дашборды |  | 1h | 2022-06-08 09:00 | 2022-06-08 10:00 | 55 |  |  | 2.77d | 0d | start no earlier than 2022-06-08 08:00 | Настя | 1h |  | 2,000 |  |
| 78 | 1.4.6.3 | Склейка видео |  | 0.5h | 2022-06-08 10:00 | 2022-06-08 10:30 | 76, 77 |  |  | 2.77d | 0d |  | Аня | 0.5h |  | 1,000 |  |
| 79 | 1.4.7 | Первый вариант демо видео передан на согласование | milestone | 0h | 2022-06-08 10:30 | 2022-06-08 10:30 | 78 |  |  | 0.12d |  |  |  |  |  |  |  |
| 80 | 1.4.8 | Согласование отчета, презентации и демо видео с Заказчиком |  | 2h | 2022-06-09 09:00 | 2022-06-09 11:00 | 66, 74, 79 |  |  | 4.8d | 0d | start no earlier than 2022-06-09 08:00 | Заказчик; Маша; Надя | 6h |  | 8,000 |  |
| 81 | 1.4.9 | Исправление замечаний. Подготовка финальной версии документов |  | 4h | 2022-06-09 11:00 | 2022-06-09 16:00 | 80 |  |  | 4.8d | 0d |  | Заказчик; Маша; Надя | 12h |  | 16,000 |  |
| 82 | 1.4.10 | Окончательная версия документов передана на согласование | milestone | 0h | 2022-06-09 16:00 | 2022-06-09 16:00 | 81 |  |  | 0.85d |  |  |  |  |  |  |  |
| 83 | 1.4.11 | Согласование окончательной версии документов |  | 2h | 2022-06-10 09:00 | 2022-06-10 11:00 | 82 |  |  | 3.95d | 0d | start no earlier than 2022-06-10 08:00 | Заказчик; Маша; Надя | 6h |  | 8,000 |  |
| 84 | 1.4.12 | Отчет, презентация и демо видео согласованы | milestone | 0h | 2022-06-10 11:00 | 2022-06-10 11:00 | 83 |  |  | 4.7d | 0d |  |  |  |  |  |  |
| 85 | 1.4.13 | Отчет, презентация и демо видео загружены в ЛМС и MS Teams | milestone | 0h | 2022-06-10 11:00 | 2022-06-10 11:00 | 84 |  |  | 4.7d |  |  |  |  |  |  |  |

| ID | WBS | Task | Duration | Start | Finish | Predecessors | Total slack | Constraint | Resources | Work | Cost |
| --- | --- | --- | --- | --- | --- | --- | --- | --- | --- | --- | --- |
| 86 | 1.5 | **Этап 5. Защита проекта** | 0.01d | 2022-06-14 09:00 | 2022-06-14 09:18 |  | 0d |  |  | 1.5h | 3,000 |
| 87 | 1.5.1 | Командная защита проекта перед комиссией | 0.3h | 2022-06-14 09:00 | 2022-06-14 09:18 | 85 | 0d | start no earlier than 2022-06-14 08:00 | Алина; Аня; Маша; Надя; Настя | 1.5h | 3,000 |
