# ПроектныйСеминарПлан

Schedule from MS Project, 2022-02-07 to 2022-03-24, costs in ₽, A marks actual dates.

## Calendars

- Стандартный: Mon-Fri 09:00-13:00, 14:00-18:00; Sat-Sun off. Exceptions (off unless hours are given): 2022-02-12 09:00-13:00, 14:00-18:00, 2022-02-19 09:00-13:00, 14:00-18:00, 2022-02-26 09:00-13:00, 14:00-18:00, 2022-03-05 09:00-13:00, 14:00-18:00, 2022-03-12 09:00-13:00, 14:00-18:00.

## Resources

| Resource | Rate |
| --- | --- |
| Маша | 2000 |
| Настя | 2000 |
| Надя | 2000 |
| Алина | 2000 |
| Аня | 2000 |
| Заказчик |  |

## Schedule

| ID | WBS | Task | Type | Duration | Start | Finish | Predecessors | Complete | Remaining | Total slack | Constraint | Resources | Work | Actual work | Cost | Actual cost |
| --- | --- | --- | --- | --- | --- | --- | --- | --- | --- | --- | --- | --- | --- | --- | --- | --- |
| 1 | 1 | **Проект "Автоматизация процесса ежемесячного планирования производства на основе плана продаж"** |  | 38.01d | 2022-02-07 09:00 A | 2022-03-24 09:06 |  | 67% | 12.4d | 0d |  |  | 124.5h | 87h | 225,200 | 157,200 |
| 2 | 1.1 | **Этап 1. Подготовка проекта** |  | 11.5d | 2022-02-07 09:00 A | 2022-02-19 13:00 A |  | 100% |  |  |  |  | 44.7h | 44.7h | 82,100 | 82,100 |
| 3 | 1.1.1 | **Подготовка плана проекта** |  | 5.12d | 2022-02-07 09:00 A | 2022-02-12 10:00 A |  | 100% |  |  |  |  | 12h | 12h | 21,000 | 21,000 |
| 4 | 1.1.1.1 | Подготовка первого драфта плана проекта |  | 2.5h | 2022-02-07 09:00 A | 2022-02-07 11:30 A |  | 100% |  |  | start no earlier than 2022-02-07 09:00 | Маша; Надя | 5h | 5h | 10,000 | 10,000 |
| 5 | 1.1.1.2 | Первый драфт плана проекта передан на согласование | milestone | 0h | 2022-02-08 09:00 A | 2022-02-08 09:00 A | 4 | 100% |  |  | start no earlier than 2022-02-09 09:00 |  |  |  |  |  |
| 6 | 1.1.1.3 | Согласование первого драфта плана проекта |  | 0.5h | 2022-02-10 09:00 A | 2022-02-10 09:30 A | 5 | 100% |  |  | start no earlier than 2022-02-10 09:00 | Заказчик; Маша | 1h | 1h | 1,000 | 1,000 |
| 7 | 1.1.1.4 | Исправление замечаний. Подготовка финальной версии документа |  | 4h | 2022-02-10 09:09 A | 2022-02-10 14:09 A | 6 | 100% |  |  | start no earlier than 2022-02-10 09:00 | Маша | 4h | 4h | 8,000 | 8,000 |
| 8 | 1.1.1.5 | Окончательная версия передана на согласование | milestone | 0h | 2022-02-10 12:09 A | 2022-02-10 12:09 A | 7 | 100% |  |  |  |  |  |  |  |  |
| 9 | 1.1.1.6 | Согласование окончательной версии плана проекта |  | 1h | 2022-02-12 09:00 A | 2022-02-12 10:00 A | 8 | 100% |  |  | start no earlier than 2022-02-12 09:00 | Заказчик; Маша | 2h | 2h | 2,000 | 2,000 |
| 10 | 1.1.1.7 | План проекта согласован | milestone | 0h | 2022-02-12 09:30 A | 2022-02-12 09:30 A | 9 | 100% |  |  | start no earlier than 2022-02-11 09:00 |  |  |  |  |  |
| 11 | 1.1.2 | **Проведение интервью с заказчиком** |  | 6.12d | 2022-02-12 09:00 A | 2022-02-19 10:00 A |  | 100% |  |  |  |  | 24.7h | 24.7h | 47,100 | 47,100 |
| 12 | 1.1.2.1 | Запрос материалов у заказчика |  | 0.1h | 2022-02-12 09:30 A | 2022-02-12 09:36 A | 10 | 100% |  |  | start no earlier than 2022-02-11 09:00 | Надя | 0.1h | 0.1h | 200 | 200 |
| 13 | 1.1.2.2 | Материалы предоставлены | milestone | 0h | 2022-02-12 09:36 A | 2022-02-12 09:36 A | 12 | 100% |  |  |  |  |  |  |  |  |
| 14 | 1.1.2.3 | Согласование даты интервью |  | 0.3h | 2022-02-12 09:15 A | 2022-02-12 09:33 A | 13 | 100% |  |  | start no earlier than 2022-02-12 09:00 | Маша; Заказчик | 0.3h | 0.3h | 600 | 600 |
| 15 | 1.1.2.4 | Дата интервью согласована | milestone | 0h | 2022-02-12 09:00 A | 2022-02-12 09:00 A | 14 | 100% |  |  |  |  |  |  |  |  |
| 16 | 1.1.2.5 | Анализ предоставленных материалов |  | 2h | 2022-02-14 09:00 A | 2022-02-14 11:00 A | 15 | 100% |  |  | start no earlier than 2022-02-14 09:00 | Настя; Надя | 4h | 4h | 8,000 | 8,000 |
| 17 | 1.1.2.6 | Составление опросника для интервью заказчика |  | 2.5h | 2022-02-15 09:00 A | 2022-02-15 11:30 A | 16 | 100% |  |  | start no earlier than 2022-02-15 09:00 | Надя; Настя | 5h | 5h | 10,000 | 10,000 |
| 18 | 1.1.2.7 | Опросник составлен и отправлен заказчику | milestone | 0h | 2022-02-15 11:30 A | 2022-02-15 11:30 A | 17 | 100% |  |  |  |  |  |  |  |  |
| 19 | 1.1.2.8 | Проведение интервью 1 с заказчиком |  | 1h | 2022-02-17 09:00 A | 2022-02-17 10:00 A | 18 | 100% |  |  | start no earlier than 2022-02-17 09:00 | Настя; Надя | 2h | 2h | 4,000 | 4,000 |
| 20 | 1.1.2.9 | Согласование даты встречи для согласования протокола интервью |  | 0.15h | 2022-02-17 10:00 A | 2022-02-17 10:09 A | 19 | 100% |  |  |  | Маша; Заказчик | 0.3h | 0.3h | 300 | 300 |
| 21 | 1.1.2.10 | Дата втречи согласована | milestone | 0h | 2022-02-17 10:09 A | 2022-02-17 10:09 A | 20 | 100% |  |  |  |  |  |  |  |  |
| 22 | 1.1.2.11 | Проведение интервью 2 с заказчиком |  | 1h | 2022-02-18 09:00 A | 2022-02-18 10:00 A | 21 | 100% |  |  | start no earlier than 2022-02-18 09:00 | Надя; Настя | 2h | 2h | 4,000 | 4,000 |
| 23 | 1.1.2.12 | Составление протокола интервью |  | 1h | 2022-02-18 10:00 A | 2022-02-18 11:00 A | 22 | 100% |  |  |  | Алина; Надя; Настя | 3h | 3h | 6,000 | 6,000 |
| 24 | 1.1.2.13 | Протокол составлен | milestone | 0h | 2022-02-18 11:00 A | 2022-02-18 11:00 A | 23 | 100% |  |  |  |  |  |  |  |  |
| 25 | 1.1.2.14 | Согласование протокола интервью |  | 1h | 2022-02-18 11:00 A | 2022-02-18 12:00 A | 24 | 100% |  |  | start no earlier than 2022-02-18 09:00 | Заказчик; Настя | 2h | 2h | 2,000 | 2,000 |
| 26 | 1.1.2.15 | Протокол согласован | milestone | 0h | 2022-02-18 12:00 A | 2022-02-18 12:00 A | 25 | 100% |  |  |  |  |  |  |  |  |
| 27 | 1.1.2.16 | Описание целей, задач и ожиданий от результатов проекта |  | 3h | 2022-02-18 12:00 A | 2022-02-18 16:00 A | 26 | 100% |  |  |  | Маша | 3h | 3h | 6,000 | 6,000 |
| 28 | 1.1.2.17 | Цели, задачи и ожидания от результатов проекта определены и согласованы | milestone | 0h | 2022-02-18 16:00 A | 2022-02-18 16:00 A | 27 | 100% |  |  |  |  |  |  |  |  |
| 29 | 1.1.2.18 | Составление реестра стейкхолдеров проекта |  | 3h | 2022-02-18 16:00 A | 2022-02-19 10:00 A | 27 | 100% |  |  |  | Маша | 3h | 3h | 6,000 | 6,000 |
| 30 | 1.1.2.19 | Реестр стейкхолдеров проекта составлен и согласован | milestone | 0h | 2022-02-19 10:00 A | 2022-02-19 10:00 A | 29 | 100% |  |  |  |  |  |  |  |  |

| ID | WBS | Task | Type | Duration | Start | Finish | Predecessors | Complete | Remaining | Total slack | Constraint | Resources | Work | Actual work | Cost | Actual cost |
| --- | --- | --- | --- | --- | --- | --- | --- | --- | --- | --- | --- | --- | --- | --- | --- | --- |
| 31 | 1.1.3 | **Подготовка рамок проекта** |  | 0.75d | 2022-02-18 12:00 A | 2022-02-19 10:00 A |  | 100% |  |  |  |  | 5h | 5h | 8,000 | 8,000 |
| 32 | 1.1.3.1 | Определение рамок проекта |  | 3h | 2022-02-18 12:00 A | 2022-02-18 16:00 A | 30 | 100% |  |  |  | Маша | 3h | 3h | 6,000 | 6,000 |
| 33 | 1.1.3.2 | Рамки проекта определены | milestone | 0h | 2022-02-18 16:00 A | 2022-02-18 16:00 A | 32 | 100% |  |  |  |  |  |  |  |  |
| 34 | 1.1.3.3 | Согласование рамок проекта |  | 1h | 2022-02-19 09:00 A | 2022-02-19 10:00 A | 33 | 100% |  |  | start no earlier than 2022-02-19 09:00 | Заказчик; Маша | 2h | 2h | 2,000 | 2,000 |
| 35 | 1.1.3.4 | Рамки проекта согласованы | milestone | 0h | 2022-02-19 10:00 A | 2022-02-19 10:00 A | 34 | 100% |  |  |  |  |  |  |  |  |
| 36 | 1.1.4 | Написание отчета о проделанной работе по этапу 1 |  | 3h | 2022-02-19 10:00 A | 2022-02-19 13:00 A | 35 | 100% |  |  | start no earlier than 2022-02-12 09:00 | Надя | 3h | 3h | 6,000 | 6,000 |
| 37 | 1.2 | **Этап 2. Формирование требований и реестра рисков** |  | 5.88d | 2022-02-19 14:00 A | 2022-02-26 12:00 |  | 99% | 0d | 20.64d |  |  | 27.6h | 27.6h | 51,100 | 51,100 |
| 38 | 1.2.1 | **Формирование требований** |  | 2.56d | 2022-02-19 14:00 A | 2022-02-23 09:30 A |  | 100% |  |  |  |  | 19.6h | 19.6h | 37,100 | 37,100 |
| 39 | 1.2.1.1 | Согласование даты интервью |  | 0.15h | 2022-02-19 14:00 A | 2022-02-19 14:09 A | 36 | 100% |  |  |  | Заказчик; Маша | 0.3h | 0.3h | 300 | 300 |
| 40 | 1.2.1.2 | Дата интервью согласована | milestone | 0h | 2022-02-19 14:09 A | 2022-02-19 14:09 A | 39 | 100% |  |  |  |  |  |  |  |  |
| 41 | 1.2.1.3 | Проведение интервью с заказчиком |  | 2h | 2022-02-21 09:00 A | 2022-02-21 11:00 A | 40 | 100% |  |  | start no earlier than 2022-02-21 09:00 | Аня | 2h | 2h | 4,000 | 4,000 |
| 42 | 1.2.1.4 | Согласование даты встречи для согласования требований |  | 0.15h | 2022-02-21 11:00 A | 2022-02-21 11:09 A | 41 | 100% |  |  | start no earlier than 2022-02-21 09:00 | Заказчик; Маша | 0.3h | 0.3h | 300 | 300 |
| 43 | 1.2.1.5 | Дата втречи согласована | milestone | 0h | 2022-02-21 11:09 A | 2022-02-21 11:09 A | 42 | 100% |  |  |  |  |  |  |  |  |
| 44 | 1.2.1.6 | Формирование функциональных требований к системе (определение структуры функционального дизайна) |  | 2.5h | 2022-02-21 11:09 A | 2022-02-21 14:39 A | 43 | 100% |  |  | start no earlier than 2022-02-21 09:00 | Аня; Настя | 5h | 5h | 10,000 | 10,000 |
| 45 | 1.2.1.7 | Формирование нефункциональных требований к системе |  | 2.5h | 2022-02-21 11:09 A | 2022-02-21 14:39 A | 43 | 100% |  |  | start no earlier than 2022-02-16 09:00 | Надя; Алина | 5h | 5h | 10,000 | 10,000 |
| 46 | 1.2.1.8 | Согласование функциональных и нефункциональных требований |  | 0.38h | 2022-02-22 09:00 A | 2022-02-22 09:22 A | 44, 45 | 100% |  |  | start no earlier than 2022-02-22 09:00 | Аня; Надя; Маша; Заказчик | 1.5h | 1.5h | 2,250 | 2,250 |
| 47 | 1.2.1.9 | Исправление замечаний. Подготовка финальной версии требований |  | 2h | 2022-02-22 09:30 A | 2022-02-22 11:30 A | 46 | 100% |  |  |  | Аня; Надя | 4h | 4h | 8,000 | 8,000 |
| 48 | 1.2.1.10 | Согласование финальной версии требований |  | 0.38h | 2022-02-23 09:00 A | 2022-02-23 09:22 A | 47 | 100% |  |  | start no earlier than 2022-02-23 09:00 | Заказчик; Надя; Маша; Аня | 1.5h | 1.5h | 2,250 | 2,250 |
| 49 | 1.2.1.11 | Функциональные требования согласованы | milestone | 0h | 2022-02-23 09:30 A | 2022-02-23 09:30 A | 48 | 100% |  |  |  |  |  |  |  |  |
| 50 | 1.2.1.12 | Нефункциональные требования согласованы | milestone | 0h | 2022-02-23 09:30 A | 2022-02-23 09:30 A | 48 | 100% |  |  |  |  |  |  |  |  |
| 51 | 1.2.2 | **Подготовка реестра рисков** |  | 1.12d | 2022-02-24 09:00 A | 2022-02-25 10:00 |  | 99% | 0d | 21.89d |  |  | 5h | 5h | 8,000 | 8,000 |
| 52 | 1.2.2.1 | Подготовка первого драфта реестра рисков |  | 3h | 2022-02-24 09:00 A | 2022-02-24 12:00 A | 49, 50 | 100% |  |  | start no earlier than 2022-02-24 09:00 | Маша | 3h | 3h | 6,000 | 6,000 |
| 53 | 1.2.2.2 | Первый драфт реестра рисков передан на согласование | milestone | 0h | 2022-02-24 12:00 A | 2022-02-24 12:00 A | 52 | 100% |  |  |  |  |  |  |  |  |
| 54 | 1.2.2.3 | Согласование реестра рисков |  | 1h | 2022-02-25 09:00 A | 2022-02-25 10:00 A | 53 | 100% |  |  | start no earlier than 2022-02-25 09:00 | Заказчик; Маша | 2h | 2h | 2,000 | 2,000 |
| 55 | 1.2.2.4 | Реестр рисков согласован | milestone | 0h | 2022-02-25 10:00 | 2022-02-25 10:00 | 54 |  |  | 21.89d |  |  |  |  |  |  |
| 56 | 1.2.3 | Написание отчета о проделанной работе по этапу 2 |  | 3h | 2022-02-26 09:00 A | 2022-02-26 12:00 A | 55 | 100% |  |  | start no earlier than 2022-02-26 09:00 | Алина | 3h | 3h | 6,000 | 6,000 |

| ID | WBS | Task | Type | Duration | Start | Finish | Predecessors | Complete | Remaining | Total slack | Free slack | Constraint | Resources | Work | Actual work | Cost | Actual cost |
| --- | --- | --- | --- | --- | --- | --- | --- | --- | --- | --- | --- | --- | --- | --- | --- | --- | --- |
| 57 | 1.3 | **Этап 3. Выбор ИТ-решения (имеется в виду платформа) и формирование бизнес-кейса** |  | 5.44d | 2022-02-28 09:00 A | 2022-03-05 12:30 |  | 41% | 3.21d | 14.57d |  |  |  | 27.4h | 11.4h | 49,400 | 19,400 |
| 58 | 1.3.1 | Согласование даты встречи для согласования критериев |  | 0.15h | 2022-02-28 09:00 A | 2022-02-28 09:09 A | 56 | 100% |  |  |  | start no earlier than 2022-02-28 09:00 | Заказчик; Маша | 0.3h | 0.3h | 300 | 300 |
| 59 | 1.3.2 | Дата втречи согласована | milestone | 0h | 2022-02-28 09:09 A | 2022-02-28 09:09 A | 58 | 100% |  |  |  |  |  |  |  |  |  |
| 60 | 1.3.3 | Определение перечня критериев для выбора ИТ-решения |  | 5h | 2022-02-28 09:09 | 2022-02-28 15:09 | 59 |  |  | 18.62d | 0.36d | start no earlier than 2022-02-28 09:00 | Настя | 5h |  | 10,000 |  |
| 61 | 1.3.4 | Согласование перечня критериев |  | 1h | 2022-03-01 09:00 | 2022-03-01 10:00 | 60 |  |  | 18.26d | 0d | start no earlier than 2022-03-01 09:00 | Заказчик; Настя | 2h |  | 2,000 |  |
| 62 | 1.3.5 | Критерии согласованы | milestone | 0h | 2022-03-01 10:00 | 2022-03-01 10:00 | 61 |  |  | 18.26d | 0.88d |  |  |  |  |  |  |
| 63 | 1.3.6 | Проведение сравнительного анализа ИТ-решений |  | 4h | 2022-03-02 09:00 | 2022-03-02 13:00 | 62 |  |  | 17.39d | 0d | start no earlier than 2022-03-02 09:00 | Аня | 4h |  | 8,000 |  |
| 64 | 1.3.7 | Составление матрицы сравнения ИТ-решений |  | 1h | 2022-03-02 14:00 | 2022-03-02 15:00 | 63 |  |  | 17.39d | 0d | start no earlier than 2022-02-23 09:00 | Настя; Аня | 2h |  | 4,000 |  |
| 65 | 1.3.8 | Матрица сравнений составлена | milestone | 0h | 2022-03-02 15:00 | 2022-03-02 15:00 | 64 |  |  | 17.39d |  |  |  |  |  |  |  |
| 66 | 1.3.9 | **Подготовка бизнес-кейса** |  | 2.44d | 2022-03-02 15:00 A | 2022-03-05 09:30 |  | 99% | 0d | 13.31d |  |  |  | 11.1h | 11.1h | 19,100 | 19,100 |
| 67 | 1.3.9.1 | Согласование даты интервью |  | 0.15h | 2022-03-02 15:00 A | 2022-03-02 15:09 A | 65 | 100% |  |  |  | start no earlier than 2022-02-23 09:00 | Заказчик; Маша | 0.3h | 0.3h | 300 | 300 |
| 68 | 1.3.9.2 | Дата интервью согласована | milestone | 0h | 2022-03-02 15:09 A | 2022-03-02 15:09 A | 67 | 100% |  |  |  |  |  |  |  |  |  |
| 69 | 1.3.9.3 | Проведение интервью с заказчиком |  | 2h | 2022-03-02 15:09 A | 2022-03-02 17:09 A | 68 | 100% |  |  |  | start no earlier than 2022-02-24 09:00 | Маша | 2h | 2h | 4,000 | 4,000 |
| 70 | 1.3.9.4 | Согласование даты встречи для согласования бизнес-кейса |  | 0.15h | 2022-03-02 17:09 A | 2022-03-02 17:18 A | 69 | 100% |  |  |  | start no earlier than 2022-02-24 09:00 | Заказчик; Маша | 0.3h | 0.3h | 300 | 300 |
| 71 | 1.3.9.5 | Дата втречи согласована | milestone | 0h | 2022-03-02 17:18 A | 2022-03-02 17:18 A | 70 | 100% |  |  |  | start no earlier than 2022-02-24 09:00 |  |  |  |  |  |
| 72 | 1.3.9.6 | Формирование бизнес-кейса |  | 4h | 2022-03-03 09:00 A | 2022-03-03 13:00 A | 71 | 100% |  |  |  | start no earlier than 2022-03-03 09:00 | Маша | 4h | 4h | 8,000 | 8,000 |
| 73 | 1.3.9.7 | Согласование бизнес-кейса |  | 0.75h | 2022-03-04 09:00 A | 2022-03-04 09:45 A | 72 | 100% |  |  |  | start no earlier than 2022-03-04 09:00 | Заказчик; Маша | 1.5h | 1.5h | 1,500 | 1,500 |
| 74 | 1.3.9.8 | Исправление замечаний. Подготовка финальной версии документа |  | 2h | 2022-03-04 09:45 A | 2022-03-04 11:45 A | 73 | 100% |  |  |  |  | Маша | 2h | 2h | 4,000 | 4,000 |
| 75 | 1.3.9.9 | Согласование финальной версии бизнес-кейса |  | 0.5h | 2022-03-05 09:00 A | 2022-03-05 09:30 A | 74 | 100% |  |  |  | start no earlier than 2022-03-05 09:00 | Заказчик; Маша | 1h | 1h | 1,000 | 1,000 |
| 76 | 1.3.9.10 | Бизнес-кейс согласован | milestone | 0h | 2022-03-05 09:30 | 2022-03-05 09:30 | 75 |  |  | 13.31d | 0d |  |  |  |  |  |  |
| 77 | 1.3.10 | Написание отчета о проделанной работе по этапу 3 |  | 3h | 2022-03-05 09:30 | 2022-03-05 12:30 | 76 |  |  | 13.31d | 2.88d | start no earlier than 2022-03-03 09:00 | Настя | 3h |  | 6,000 |  |
| 78 | 1.4 | **Этап 4. Оформление результатов** |  | 7.19d | 2022-03-05 12:30 A | 2022-03-14 15:00 |  | 15% | 6.14d | 7.25d |  |  |  | 19.3h | 3.3h | 31,600 | 4,600 |
| 79 | 1.4.1 | **Подготовка устава проекта** |  | 2.69d | 2022-03-05 12:30 A | 2022-03-09 10:00 |  | 43% | 1.52d | 10.44d |  |  |  | 7.3h | 3.3h | 10,600 | 4,600 |
| 80 | 1.4.1.1 | Согласование даты встречи для согласования устава проекта |  | 0.3h | 2022-03-05 12:30 A | 2022-03-05 12:48 A | 77 | 100% |  |  |  | start no earlier than 2022-03-04 09:00 | Маша | 0.3h | 0.3h | 600 | 600 |
| 81 | 1.4.1.2 | Дата втречи согласована | milestone | 0h | 2022-03-05 12:48 A | 2022-03-05 12:48 A | 80 | 100% |  |  |  |  |  |  |  |  |  |

| ID | WBS | Task | Type | Duration | Start | Finish | Predecessors | Complete | Remaining | Total slack | Free slack | Constraint | Resources | Work | Actual work | Cost | Actual cost |
| --- | --- | --- | --- | --- | --- | --- | --- | --- | --- | --- | --- | --- | --- | --- | --- | --- | --- |
| 82 | 1.4.1.3 | **Подготовка драфта устава проекта** |  | 2.12d | 2022-03-07 09:00 A | 2022-03-09 10:00 |  | 40% | 1.27d | 10.44d |  |  |  | 7h | 3h | 10,000 | 4,000 |
| 83 | 1.4.1.3.1 | Объединение согласованных разделов устава в один документ |  | 1h | 2022-03-07 09:00 A | 2022-03-07 10:00 A | 81 | 100% |  |  |  | start no earlier than 2022-03-07 09:00 | Маша | 1h | 1h | 2,000 | 2,000 |
| 84 | 1.4.1.3.2 | Первый драфт устава проекта передан на согласование | milestone | 0h | 2022-03-07 10:00 A | 2022-03-07 10:00 A | 83 | 100% |  |  |  |  |  |  |  |  |  |
| 85 | 1.4.1.3.3 | Согласование устава проекта |  | 1h | 2022-03-08 09:00 A | 2022-03-08 10:00 A | 84 | 100% |  |  |  | start no earlier than 2022-03-14 09:00 | Заказчик; Маша | 2h | 2h | 2,000 | 2,000 |
| 86 | 1.4.1.3.4 | Исправление замечаний. Подготовка финальной версии документа |  | 2h | 2022-03-08 10:00 | 2022-03-08 12:00 | 85 |  |  | 11.06d | 0.62d | start no earlier than 2022-03-08 09:00 | Маша | 2h |  | 4,000 |  |
| 87 | 1.4.1.3.5 | Согласование финальной версии устава проекта |  | 1h | 2022-03-09 09:00 | 2022-03-09 10:00 | 86 |  |  | 10.44d | 0d | start no earlier than 2022-03-09 09:00 | Заказчик; Маша | 2h |  | 2,000 |  |
| 88 | 1.4.1.3.6 | Устав проекта согласован и утвержден | milestone | 0h | 2022-03-09 10:00 | 2022-03-09 10:00 | 87 |  |  | 10.44d | 0d |  |  |  |  |  |  |
| 89 | 1.4.2 | Написание отчета о проделанной работе по этапу 4 |  | 1.5h | 2022-03-09 10:00 | 2022-03-09 11:30 | 88 |  |  | 10.44d | 0d | start no earlier than 2022-03-09 09:00 | Аня | 1.5h |  | 3,000 |  |
| 90 | 1.4.3 | Объединение отчетов по этапам 1-4 |  | 1h | 2022-03-09 11:30 | 2022-03-09 12:30 | 89, 77 |  |  | 10.44d | 0d |  | Алина | 1h |  | 2,000 |  |
| 91 | 1.4.4 | Драфт отчета составлен | milestone | 0h | 2022-03-09 12:30 | 2022-03-09 12:30 | 90 |  |  | 10.44d | 0.56d | start no earlier than 2022-02-26 09:00 |  |  |  |  |  |
| 92 | 1.4.5 | Согласование отчета |  | 1h | 2022-03-10 09:00 | 2022-03-10 10:00 | 91 |  |  | 9.88d | 0d | start no earlier than 2022-03-10 09:00 | Заказчик; Надя | 2h |  | 2,000 |  |
| 93 | 1.4.6 | Исправление замечаний. Подготовка финальной версии документа |  | 1.5h | 2022-03-10 10:00 | 2022-03-10 11:30 | 92 |  |  | 9.88d | 0.69d | start no earlier than 2022-03-10 09:00 | Надя | 1.5h |  | 3,000 |  |
| 94 | 1.4.7 | Согласование финальной версии отчета |  | 0.5h | 2022-03-11 09:00 | 2022-03-11 09:30 | 93 |  |  | 9.19d | 0d | start no earlier than 2022-03-11 09:00 | Заказчик; Надя | 1h |  | 1,000 |  |
| 95 | 1.4.8 | Отчет согласован | milestone | 0h | 2022-03-11 09:30 | 2022-03-11 09:30 | 94 |  |  | 9.19d | 1.94d |  |  |  |  |  |  |
| 96 | 1.4.9 | Составление презентации |  | 5h | 2022-03-14 09:00 | 2022-03-14 15:00 | 95 |  |  | 7.25d | 0d | start no earlier than 2022-03-14 09:00 | Аня | 5h |  | 10,000 |  |
| 97 | 1.4.10 | Презентация составлена | milestone | 0h | 2022-03-14 15:00 | 2022-03-14 15:00 | 96 |  |  | 7.25d | 5.38d |  |  |  |  |  |  |
| 98 | 1.5 | **Этап 5. Защита проекта** |  | 2.01d | 2022-03-22 09:00 | 2022-03-24 09:06 |  |  |  | 0d |  |  |  | 5.5h |  | 11,000 |  |
| 99 | 1.5.1 | Доработка результатов по замечаниям заказчика |  | 1h | 2022-03-22 09:00 | 2022-03-22 10:00 | 97 |  |  | 1.88d |  | start no earlier than 2022-03-22 09:00 | Маша; Алина; Аня; Надя; Настя | 5h |  | 10,000 |  |
| 100 | 1.5.2 | Командная защита проекта перед заказчиком |  | 0.1h | 2022-03-24 09:00 | 2022-03-24 09:06 | 99 |  |  | 0d |  | start no earlier than 2022-03-24 09:00 | Алина; Аня; Маша; Надя; Настя | 0.5h |  | 1,000 |  |
